# Planificación

Schedule from MS Project, 2022-11-28 to 2023-05-23, costs in €.

## Calendars

- Estándar: Mon-Fri 09:00-13:00, 15:00-19:00; Sat-Sun off.

## Resources

| Resource | Rate |
| --- | --- |
| Programador 1 | 10 |
| Programador 2 | 10 |
| Arquitecto 1 | 15 |
| Tester 1 | 8.12 |

## Schedule

| ID | WBS | Task | Duration | Start | Finish | Predecessors | Total slack | Free slack | Resources | Work | Cost |
| --- | --- | --- | --- | --- | --- | --- | --- | --- | --- | --- | --- |
| 1 | 1 | **2-Editar datos personales** | 22.5d | 2022-12-06 | 2023-01-05 |  | 0.5d |  |  | 216h | 2,365 |
| 2 | 1.1 | Pantalla/formulario-Pruebas | 5d | 2022-12-29 | 2023-01-05 | 29, 3 | 29d | 3d | Tester 1 | 40h | 325 |
| 3 | 1.2 | Pantalla/formulario-Codificación | 7d | 2022-12-20 | 2022-12-29 | 4, 30, 5 | 27d | 0d | Programador 2 | 56h | 560 |
| 4 | 1.3 | Pantalla/formulario-Diseño | 5d | 2022-12-08 | 2022-12-14 | 6 | 0.5d | 0d | Arquitecto 1 | 40h | 600 |
| 5 | 1.4 | Controlador-Codificación | 5d | 2022-12-13 | 2022-12-20 | 7 | 0d |  | Programador 1 | 40h | 400 |
| 6 | 1.5 | Controlador-Diseño | 2d | 2022-12-06 | 2022-12-07 | 31 | 0.5d | 0d | Arquitecto 1 | 16h | 240 |
| 7 | 1.6 | DAO-Codificación | 3d | 2022-12-08 | 2022-12-13 | 6, 32 | 0d |  | Programador 1 | 24h | 240 |
| 8 | 2 | **3-Crear nuevo negocio** | 22.5d | 2022-12-15 | 2023-01-16 |  | 0.5d |  |  | 228h | 2,600 |
| 9 | 2.1 | Pantalla/formulario-Pruebas | 4d | 2023-01-10 | 2023-01-16 | 2, 10 | 26d | 0d | Tester 1 | 32h | 260 |
| 10 | 2.2 | Pantalla/formulario-Codificación | 6d | 2023-01-02 | 2023-01-10 | 11, 3, 12 | 25d | 0d | Programador 2 | 48h | 480 |
| 11 | 2.3 | Pantalla/formulario-Diseño | 2.5d | 2022-12-26 | 2022-12-28 | 13 | 5d | 0d | Arquitecto 1 | 20h | 300 |
| 12 | 2.4 | Controlador-Codificación | 5d | 2022-12-26 | 2023-01-02 | 13, 14 | 0d |  | Programador 1 | 40h | 400 |
| 13 | 2.5 | Controlador-Diseño | 2d | 2022-12-22 | 2022-12-23 | 15 | 0.5d | 0d | Arquitecto 1 | 16h | 240 |
| 14 | 2.6 | DAO-Codificación | 4d | 2022-12-20 | 2022-12-26 | 5 | 0d |  | Programador 1 | 32h | 320 |
| 15 | 2.7 | BBDD-Diseño | 5d | 2022-12-15 | 2022-12-21 | 4 | 0.5d | 0d | Arquitecto 1 | 40h | 600 |
| 16 | 3 | **6-Eliminar negocio** | 21d | 2023-01-04 | 2023-02-02 |  | 7.5d |  |  | 72h | 715 |
| 17 | 3.1 | Pantalla/formulario-Pruebas | 3d | 2023-01-30 | 2023-02-02 | 44, 18 | 22d | 9d | Tester 1 | 24h | 195 |
| 18 | 3.2 | Controlador-Codificación | 3d | 2023-01-23 | 2023-01-26 | 19, 20 | 0d |  | Programador 1 | 24h | 240 |
| 19 | 3.3 | Controlador-Diseño | 1d | 2023-01-04 | 2023-01-05 | 46 | 7.5d | 0d | Arquitecto 1 | 8h | 120 |
| 20 | 3.4 | DAO-Codificación | 2d | 2023-01-19 | 2023-01-23 | 47 | 0d |  | Programador 1 | 16h | 160 |
| 21 | 4 | **7-Modificación datos asociados** | 34d | 2023-01-05 | 2023-02-22 |  | 7.5d |  |  | 240h | 2,765 |
| 22 | 4.1 | DAO-Codificación | 2d | 2023-01-26 | 2023-01-30 | 18 | 0d |  | Programador 1 | 16h | 160 |
| 23 | 4.2 | Controlador-Diseño | 1d | 2023-01-05 | 2023-01-06 | 19 | 7.5d | 0d | Arquitecto 1 | 8h | 120 |
| 24 | 4.3 | Controlador-Codificación | 3d | 2023-01-30 | 2023-02-02 | 23, 22 | 0d |  | Programador 1 | 24h | 240 |
| 25 | 4.4 | Pantalla/formulario-Diseño | 10d | 2023-01-06 | 2023-01-20 | 23 | 7.5d | 0d | Arquitecto 1 | 80h | 1,200 |
| 26 | 4.5 | Pantalla/formulario-Codificación | 9d | 2023-02-02 | 2023-02-15 | 25, 3, 24 | 11d | 0d | Programador 2 | 72h | 720 |
| 27 | 4.6 | Pantalla/formulario-Pruebas | 5d | 2023-02-15 | 2023-02-22 | 17, 26 | 13d | 2d | Tester 1 | 40h | 325 |

| ID | WBS | Task | Duration | Start | Finish | Predecessors | Total slack | Free slack | Resources | Work | Cost |
| --- | --- | --- | --- | --- | --- | --- | --- | --- | --- | --- | --- |
| 28 | 5 | **1-Crear nueva cuenta** | 18.5d | 2022-11-28 | 2022-12-22 |  | 0d |  |  | 176h | 1,940 |
| 29 | 5.1 | Plantilla/Formulario-Pruebas | 4d | 2022-12-16 | 2022-12-22 | 30 | 34d | 5d | Tester 1 | 32h | 260 |
| 30 | 5.2 | Plantilla/Formulario-Codificación | 6d | 2022-12-08 | 2022-12-16 | 31, 32 | 29d | 0d | Programador 2 | 48h | 480 |
| 31 | 5.3 | Plantilla/Formulario-Diseño | 2.5d | 2022-12-01 | 2022-12-05 | 33 | 0.5d | 0d | Arquitecto 1 | 20h | 300 |
| 32 | 5.4 | Controlador-Codificación | 3d | 2022-12-05 | 2022-12-08 | 34 | 0d |  | Programador 1 | 24h | 240 |
| 33 | 5.5 | Controlador-Diseño | 1d | 2022-11-30 | 2022-12-01 | 35 | 0.5d | 0d | Arquitecto 1 | 8h | 120 |
| 34 | 5.6 | DAO-Codificación | 3d | 2022-11-30 | 2022-12-05 | 35 | 0d |  | Programador 1 | 24h | 240 |
| 35 | 5.7 | BBDD-Diseño | 2.5d | 2022-11-28 | 2022-11-30 |  | 0d |  | Arquitecto 1 | 20h | 300 |
| 36 | 6 | **4-Identificación y acceso** | 16d | 2022-12-28 | 2023-01-19 |  | 3d |  |  | 120h | 1,235 |
| 37 | 6.1 | Pantalla/formulario-Pruebas | 3d | 2023-01-16 | 2023-01-19 | 9, 38 | 26d | 4d | Tester 1 | 24h | 195 |
| 38 | 6.2 | Pantalla/formulario-Codificación | 4d | 2023-01-10 | 2023-01-16 | 39, 10, 40 | 25d | 0d | Programador 2 | 32h | 320 |
| 39 | 6.3 | Pantalla/formulario-Diseño | 1d | 2022-12-29 | 2022-12-30 | 41 | 7d | 0d | Arquitecto 1 | 8h | 120 |
| 40 | 6.4 | Controlador-Codificación | 3d | 2023-01-05 | 2023-01-10 | 41, 42 | 0d |  | Programador 1 | 24h | 240 |
| 41 | 6.5 | Controlador-Diseño | 1d | 2022-12-28 | 2022-12-29 | 11 | 5d | 0d | Arquitecto 1 | 8h | 120 |
| 42 | 6.6 | DAO-Codificación | 3d | 2023-01-02 | 2023-01-05 | 12 | 0d |  | Programador 1 | 24h | 240 |
| 43 | 7 | **5-Cambiar credenciales** | 21d | 2022-12-30 | 2023-01-30 |  | 7d |  |  | 136h | 1,435 |
| 44 | 7.1 | Pantalla/formulario-Pruebas | 3d | 2023-01-25 | 2023-01-30 | 37, 45 | 22d | 0d | Tester 1 | 24h | 195 |
| 45 | 7.2 | Pantalla/formulario-Codificación | 4d | 2023-01-19 | 2023-01-25 | 46, 38, 47 | 22d | 0d | Programador 2 | 32h | 320 |
| 46 | 7.3 | Pantalla/formulario-Diseño | 1d | 2023-01-03 | 2023-01-04 | 48 | 7.5d | 0d | Arquitecto 1 | 8h | 120 |
| 47 | 7.4 | Controlador-Codificación | 5d | 2023-01-12 | 2023-01-19 | 48, 49 | 0d |  | Programador 1 | 40h | 400 |
| 48 | 7.5 | Controlador-Diseño | 2d | 2022-12-30 | 2023-01-03 | 39 | 7d | 0d | Arquitecto 1 | 16h | 240 |
| 49 | 7.6 | DAO-Codificación | 2d | 2023-01-10 | 2023-01-12 | 40 | 0d |  | Programador 1 | 16h | 160 |
| 50 | 8 | **8-Registrar nuevo producto** | 30d | 2023-01-20 | 2023-03-03 |  | 7.5d |  |  | 236h | 2,665 |
| 51 | 8.1 | BBDD-Diseño | 2.5d | 2023-01-20 | 2023-01-24 | 25 | 7.5d | 0d | Arquitecto 1 | 20h | 300 |
| 52 | 8.2 | DAO-Codificación | 3d | 2023-02-02 | 2023-02-07 | 24 | 0d |  | Programador 1 | 24h | 240 |
| 53 | 8.3 | Controlador-Diseño | 2d | 2023-01-25 | 2023-01-26 | 51 | 7.5d | 0d | Arquitecto 1 | 16h | 240 |
| 54 | 8.4 | Controlador-Codificación | 5d | 2023-02-07 | 2023-02-14 | 53, 52 | 0d |  | Programador 1 | 40h | 400 |
| 55 | 8.5 | Pantalla/formulario-Diseño | 5d | 2023-01-27 | 2023-02-02 | 53 | 8.5d | 0d | Arquitecto 1 | 40h | 600 |
| 56 | 8.6 | Pantalla/formulario-Codificación | 7d | 2023-02-15 | 2023-02-24 | 55, 54, 26 | 11d | 0d | Programador 2 | 56h | 560 |
| 57 | 8.7 | Pantalla/formulario-Pruebas | 5d | 2023-02-24 | 2023-03-03 | 27, 56 | 11d | 0d | Tester 1 | 40h | 325 |

| ID | WBS | Task | Duration | Start | Finish | Predecessors | Total slack | Free slack | Resources | Work | Cost |
| --- | --- | --- | --- | --- | --- | --- | --- | --- | --- | --- | --- |
| 58 | 9 | **9-Editar producto existente** | 23.5d | 2023-02-03 | 2023-03-08 |  | 7.5d |  |  | 72h | 715 |
| 59 | 9.1 | DAO-Codificación | 2d | 2023-02-14 | 2023-02-16 | 54 | 0d |  | Programador 1 | 16h | 160 |
| 60 | 9.2 | Controlador-Diseño | 1d | 2023-02-03 | 2023-02-03 | 55 | 8.5d | 0d | Arquitecto 1 | 8h | 120 |
| 61 | 9.3 | Controlador-Codificación | 3d | 2023-02-16 | 2023-02-21 | 60, 59 | 0d |  | Programador 1 | 24h | 240 |
| 62 | 9.4 | Pantalla/formulario-Pruebas | 3d | 2023-03-03 | 2023-03-08 | 57, 61 | 11d | 0d | Tester 1 | 24h | 195 |
| 63 | 10 | **10-Eliminar producto** | 25.5d | 2023-02-06 | 2023-03-13 |  | 11d |  |  | 72h | 715 |
| 64 | 10.1 | DAO-Codificación | 2d | 2023-02-21 | 2023-02-23 | 61 | 0d |  | Programador 1 | 16h | 160 |
| 65 | 10.2 | Controlador-Diseño | 1d | 2023-02-06 | 2023-02-06 | 60 | 12.5d | 0d | Arquitecto 1 | 8h | 120 |
| 66 | 10.3 | Controlador-Codificación | 3d | 2023-02-23 | 2023-02-28 | 65, 64 | 0d |  | Programador 1 | 24h | 240 |
| 67 | 10.4 | Pantalla/formulario-Pruebas | 3d | 2023-03-08 | 2023-03-13 | 62, 66 | 11d | 0d | Tester 1 | 24h | 195 |
| 68 | 11 | **11-Editar stock manual** | 27.5d | 2023-02-07 | 2023-03-16 |  | 11d |  |  | 72h | 715 |
| 69 | 11.1 | DAO-Codificación | 2d | 2023-02-28 | 2023-03-02 | 66 | 0d |  | Programador 1 | 16h | 160 |
| 70 | 11.2 | Controlador-Diseño | 1d | 2023-02-07 | 2023-02-07 | 65 | 13.5d | 0d | Arquitecto 1 | 8h | 120 |
| 71 | 11.3 | Controlador-Codificación | 3d | 2023-03-02 | 2023-03-07 | 70, 69 | 0d |  | Programador 1 | 24h | 240 |
| 72 | 11.4 | Pantalla/formulario-Pruebas | 3d | 2023-03-13 | 2023-03-16 | 67, 71 | 11d | 7d | Tester 1 | 24h | 195 |
| 73 | 12 | **13-Añadir producto a la cesta** | 34.5d | 2023-02-23 | 2023-04-12 |  | 2d |  |  | 168h | 1,845 |
| 74 | 12.1 | Controlador-Diseño | 1d | 2023-02-23 | 2023-02-23 | 107 | 16.5d | 0d | Arquitecto 1 | 8h | 120 |
| 75 | 12.2 | Controlador-Codificación | 3d | 2023-03-14 | 2023-03-17 | 74, 106 | 6d | 0d | Programador 1 | 24h | 240 |
| 76 | 12.3 | Pantalla/formulario-Diseño | 5d | 2023-02-24 | 2023-03-02 | 74 | 16.5d | 0d | Arquitecto 1 | 40h | 600 |
| 77 | 12.4 | Pantalla/formulario-Codificación | 7d | 2023-03-27 | 2023-04-05 | 76, 108, 75 | 0d |  | Programador 2 | 56h | 560 |
| 78 | 12.5 | Pantalla/formulario-Pruebas | 5d | 2023-04-05 | 2023-04-12 | 109, 77 | 2d |  | Tester 1 | 40h | 325 |
| 79 | 13 | **16-Modificar cantidad de producto** | 34.5d | 2023-03-15 | 2023-05-02 |  | 0d |  |  | 56h | 555 |
| 80 | 13.1 | Controlador-Diseño | 1d | 2023-03-15 | 2023-03-15 | 118 | 20.5d | 0d | Arquitecto 1 | 8h | 120 |
| 81 | 13.2 | Controlador-Codificación | 3d | 2023-03-31 | 2023-04-05 | 80, 119 | 9d | 0d | Programador 1 | 24h | 240 |
| 82 | 13.3 | Pantalla/formulario-Pruebas | 3d | 2023-04-27 | 2023-05-02 | 120, 81 | 0d |  | Tester 1 | 24h | 195 |

| ID | WBS | Task | Duration | Start | Finish | Predecessors | Total slack | Free slack | Resources | Work | Cost |
| --- | --- | --- | --- | --- | --- | --- | --- | --- | --- | --- | --- |
| 83 | 14 | **17-Editar dirección de envio** | 36.5d | 2023-03-16 | 2023-05-05 |  | 0d |  |  | 56h | 555 |
| 84 | 14.1 | Controlador-Diseño | 1d | 2023-03-16 | 2023-03-16 | 80 | 22.5d | 0d | Arquitecto 1 | 8h | 120 |
| 85 | 14.2 | Controlador-Codificación | 3d | 2023-04-05 | 2023-04-10 | 84, 81 | 9d | 0d | Programador 1 | 24h | 240 |
| 86 | 14.3 | Pantalla/formulario-Pruebas | 3d | 2023-05-02 | 2023-05-05 | 82, 85 | 0d |  | Tester 1 | 24h | 195 |
| 87 | 15 | **18-Elegir método de pago** | 38.5d | 2023-03-17 | 2023-05-10 |  | 0d |  |  | 56h | 555 |
| 88 | 15.1 | Controlador-Diseño | 1d | 2023-03-17 | 2023-03-17 | 84 | 24.5d | 0d | Arquitecto 1 | 8h | 120 |
| 89 | 15.2 | Controlador-Codificación | 3d | 2023-04-10 | 2023-04-13 | 88, 85 | 9d | 0d | Programador 1 | 24h | 240 |
| 90 | 15.3 | Pantalla/formulario-Pruebas | 3d | 2023-05-05 | 2023-05-10 | 86, 89 | 0d |  | Tester 1 | 24h | 195 |
| 91 | 16 | **19-Interacción pago TPV** | 40.5d | 2023-03-20 | 2023-05-15 |  | 0d |  |  | 80h | 835 |
| 92 | 16.1 | Controlador-Diseño | 2d | 2023-03-20 | 2023-03-21 | 88 | 25.5d | 0d | Arquitecto 1 | 16h | 240 |
| 93 | 16.2 | Controlador-Codificación | 5d | 2023-04-13 | 2023-04-20 | 92, 89 | 9d | 0d | Programador 1 | 40h | 400 |
| 94 | 16.3 | Controlador-Pruebas | 3d | 2023-05-10 | 2023-05-15 | 90, 93 | 0d |  | Tester 1 | 24h | 195 |
| 95 | 17 | **20-Ajustes automáticos para la venta** | 42.5d | 2023-03-22 | 2023-05-19 |  | 0d |  |  | 128h | 1,380 |
| 96 | 17.1 | Controlador-Diseño | 4d | 2023-03-22 | 2023-03-27 | 92 | 26.5d | 0d | Arquitecto 1 | 32h | 480 |
| 97 | 17.2 | Controlador-Codificación | 8d | 2023-04-20 | 2023-05-02 | 96, 93 | 9d | 0d | Programador 1 | 64h | 640 |
| 98 | 17.3 | Controlador-Pruebas | 4d | 2023-05-15 | 2023-05-19 | 94, 97 | 0d |  | Tester 1 | 32h | 260 |
| 99 | 18 | **21-Notificación a la empresa transportista** | 40.5d | 2023-03-28 | 2023-05-23 |  | 0d |  |  | 48h | 490 |
| 100 | 18.1 | Controlador-Diseño | 1d | 2023-03-28 | 2023-03-28 | 96 | 34.5d | 24.5d | Arquitecto 1 | 8h | 120 |
| 101 | 18.2 | Controlador-Codificación | 3d | 2023-05-02 | 2023-05-05 | 100, 97 | 10d |  | Programador 1 | 24h | 240 |
| 102 | 18.3 | Controlador-Pruebas | 2d | 2023-05-19 | 2023-05-23 | 98, 101 | 0d |  | Tester 1 | 16h | 130 |
| 103 | 19 | **12-Vista general del catálogo** | 38.5d | 2023-02-08 | 2023-04-03 |  | 4d |  |  | 240h | 2,765 |
| 104 | 19.1 | DAO-Codificación | 2d | 2023-03-07 | 2023-03-09 | 71 | 0d |  | Programador 1 | 16h | 160 |
| 105 | 19.2 | Controlador-Diseño | 1d | 2023-02-08 | 2023-02-08 | 70 | 13.5d | 0d | Arquitecto 1 | 8h | 120 |
| 106 | 19.3 | Controlador-Codificación | 3d | 2023-03-09 | 2023-03-14 | 105, 104 | 0d |  | Programador 1 | 24h | 240 |
| 107 | 19.4 | Pantalla/formulario-Diseño | 10d | 2023-02-09 | 2023-02-22 | 105 | 13.5d | 0d | Arquitecto 1 | 80h | 1,200 |
| 108 | 19.5 | Pantalla/formulario-Codificación | 9d | 2023-03-14 | 2023-03-27 | 107, 56, 106 | 0d |  | Programador 2 | 72h | 720 |
| 109 | 19.6 | Pantalla/formulario-Pruebas | 5d | 2023-03-27 | 2023-04-03 | 72, 108 | 4d | 2d | Tester 1 | 40h | 325 |

| ID | WBS | Task | Duration | Start | Finish | Predecessors | Total slack | Free slack | Resources | Work | Cost |
| --- | --- | --- | --- | --- | --- | --- | --- | --- | --- | --- | --- |
| 110 | 20 | **14-Vista concreta de producto** | 35.5d | 2023-03-03 | 2023-04-21 |  | 0d |  |  | 184h | 2,005 |
| 111 | 20.1 | DAO-Codificación | 2d | 2023-03-17 | 2023-03-21 | 75 | 8d | 0d | Programador 1 | 16h | 160 |
| 112 | 20.2 | Controlador-Diseño | 1d | 2023-03-03 | 2023-03-03 | 76 | 16.5d | 0d | Arquitecto 1 | 8h | 120 |
| 113 | 20.3 | Controlador-Codificación | 3d | 2023-03-21 | 2023-03-24 | 112, 111 | 8d | 0d | Programador 1 | 24h | 240 |
| 114 | 20.4 | Pantalla/formulario-Diseño | 5d | 2023-03-06 | 2023-03-10 | 112 | 16.5d | 0d | Arquitecto 1 | 40h | 600 |
| 115 | 20.5 | Pantalla/formulario-Codificación | 7d | 2023-04-05 | 2023-04-14 | 114, 77, 113 | 0d |  | Programador 2 | 56h | 560 |
| 116 | 20.6 | Pantalla/formulario-Pruebas | 5d | 2023-04-14 | 2023-04-21 | 78, 115 | 0d |  | Tester 1 | 40h | 325 |
| 117 | 21 | **15-Aplicar búsqueda por texto** | 33.5d | 2023-03-13 | 2023-04-27 |  | 0d |  |  | 88h | 900 |
| 118 | 21.1 | Controlador-Diseño | 2d | 2023-03-13 | 2023-03-14 | 114 | 16.5d | 0d | Arquitecto 1 | 16h | 240 |
| 119 | 21.2 | Controlador-Codificación | 5d | 2023-03-24 | 2023-03-31 | 118, 113 | 9d | 0d | Programador 1 | 40h | 400 |
| 120 | 21.3 | Pantalla/formulario-Pruebas | 4d | 2023-04-21 | 2023-04-27 | 116, 119 | 0d |  | Tester 1 | 32h | 260 |
