# Planificación La Cesta Verde

Schedule from MS Project, 2022-11-28 to 2023-05-16, costs in €.

## Calendars

- Estándar: Mon-Fri 09:00-13:00, 15:00-19:00; Sat-Sun off.

## Resources

| Resource | Rate |
| --- | --- |
| Programador 1 | 10 |
| Programador 2 | 10 |
| Arquitecto 1 | 15 |
| Tester 1 | 8.12 |

## Schedule

| ID | WBS | Task | Duration | Start | Finish | Predecessors | Total slack | Free slack | Resources | Work | Cost |
| --- | --- | --- | --- | --- | --- | --- | --- | --- | --- | --- | --- |
| 1 | 1 | **2-Editar datos personales** | 25d | 2022-12-13 | 2023-01-16 |  | 0d |  |  | 232h | 2,605 |
| 2 | 1.1 | Pantalla/formulario-Pruebas | 5d | 2023-01-10 | 2023-01-16 | 29 | 19d | 0d | Tester 1 | 40h | 325 |
| 3 | 1.2 | Pantalla/formulario-Codificación | 7d | 2022-12-26 | 2023-01-03 | 4, 30 | 19d | 0d | Programador 2 | 56h | 560 |
| 4 | 1.3 | Pantalla/formulario-Diseño | 5d | 2022-12-19 | 2022-12-23 | 6 | 0d |  | Arquitecto 1 | 40h | 600 |
| 5 | 1.4 | Controlador-Codificación | 5d | 2022-12-22 | 2022-12-28 | 7 | 8d | 0d | Programador 1 | 40h | 400 |
| 6 | 1.5 | Controlador-Diseño | 4d | 2022-12-13 | 2022-12-16 | 31 | 0d |  | Arquitecto 1 | 32h | 480 |
| 7 | 1.6 | DAO-Codificación | 3d | 2022-12-19 | 2022-12-21 | 6, 32 | 8d | 0d | Programador 1 | 24h | 240 |
| 8 | 2 | **3-Crear nuevo negocio** | 21d | 2022-12-26 | 2023-01-23 |  | 0d |  |  | 272h | 3,260 |
| 9 | 2.1 | Pantalla/formulario-Pruebas | 4d | 2023-01-17 | 2023-01-20 | 2 | 19d | 0d | Tester 1 | 32h | 260 |
| 10 | 2.2 | Pantalla/formulario-Codificación | 6d | 2023-01-16 | 2023-01-23 | 11, 3 | 43d | 0d | Programador 2 | 48h | 480 |
| 11 | 2.3 | Pantalla/formulario-Diseño | 4d | 2023-01-10 | 2023-01-13 | 13 | 2.5d | 0d | Arquitecto 1 | 32h | 480 |
| 12 | 2.4 | Controlador-Codificación | 5d | 2023-01-10 | 2023-01-16 | 13, 5 | 0d |  | Programador 1 | 40h | 400 |
| 13 | 2.5 | Controlador-Diseño | 4d | 2023-01-04 | 2023-01-09 | 15 | 0d |  | Arquitecto 1 | 32h | 480 |
| 14 | 2.6 | DAO-Codificación | 4d | 2022-12-29 | 2023-01-03 | 5 | 95d |  | Programador 1 | 32h | 320 |
| 15 | 2.7 | BBDD-Diseño | 7d | 2022-12-26 | 2023-01-03 | 4 | 0d |  | Arquitecto 1 | 56h | 840 |
| 16 | 3 | **6-Eliminar negocio** | 14d | 2023-01-23 | 2023-02-09 |  | 2.5d |  |  | 72h | 715 |
| 17 | 3.1 | Pantalla/formulario-Pruebas | 3d | 2023-01-31 | 2023-02-02 | 44 | 19d | 0d | Tester 1 | 24h | 195 |
| 18 | 3.2 | Controlador-Codificación | 3d | 2023-02-07 | 2023-02-09 | 19, 20 | 0d |  | Programador 1 | 24h | 240 |
| 19 | 3.3 | Controlador-Diseño | 1d | 2023-01-23 | 2023-01-23 | 46 | 2.5d | 0d | Arquitecto 1 | 8h | 120 |
| 20 | 3.4 | DAO-Codificación | 2d | 2023-02-03 | 2023-02-06 | 47 | 0d |  | Programador 1 | 16h | 160 |
| 21 | 4 | **7-Modificación datos asociados** | 20d | 2023-01-24 | 2023-02-20 |  | 2.5d |  |  | 240h | 2,765 |
| 22 | 4.1 | DAO-Codificación | 2d | 2023-02-10 | 2023-02-13 | 18 | 0d |  | Programador 1 | 16h | 160 |
| 23 | 4.2 | Controlador-Diseño | 1d | 2023-01-24 | 2023-01-24 | 19 | 2.5d | 0d | Arquitecto 1 | 8h | 120 |
| 24 | 4.3 | Controlador-Codificación | 3d | 2023-02-14 | 2023-02-16 | 23, 22 | 0d |  | Programador 1 | 24h | 240 |
| 25 | 4.4 | Pantalla/formulario-Diseño | 10d | 2023-01-25 | 2023-02-07 | 23 | 2.5d | 0d | Arquitecto 1 | 80h | 1,200 |
| 26 | 4.5 | Pantalla/formulario-Codificación | 9d | 2023-02-08 | 2023-02-20 | 25, 3 | 61d |  | Programador 2 | 72h | 720 |
| 27 | 4.6 | Pantalla/formulario-Pruebas | 5d | 2023-02-03 | 2023-02-09 | 17 | 19d | 0d | Tester 1 | 40h | 325 |

| ID | WBS | Task | Duration | Start | Finish | Predecessors | Total slack | Free slack | Resources | Work | Cost |
| --- | --- | --- | --- | --- | --- | --- | --- | --- | --- | --- | --- |
| 28 | 5 | **1-Crear nueva cuenta** | 31d | 2022-11-28 | 2023-01-09 |  | 0d |  |  | 216h | 2,540 |
| 29 | 5.1 | Plantilla/Formulario-Pruebas | 4d | 2023-01-04 | 2023-01-09 | 3 | 19d | 0d | Tester 1 | 32h | 260 |
| 30 | 5.2 | Plantilla/Formulario-Codificación | 6d | 2022-12-13 | 2022-12-20 | 31 | 22d | 3d | Programador 2 | 48h | 480 |
| 31 | 5.3 | Plantilla/Formulario-Diseño | 4d | 2022-12-07 | 2022-12-12 | 33 | 0d |  | Arquitecto 1 | 32h | 480 |
| 32 | 5.4 | Controlador-Codificación | 3d | 2022-12-08 | 2022-12-12 | 34 | 12d | 4d | Programador 1 | 24h | 240 |
| 33 | 5.5 | Controlador-Diseño | 2d | 2022-12-05 | 2022-12-06 | 35 | 0d |  | Arquitecto 1 | 16h | 240 |
| 34 | 5.6 | DAO-Codificación | 3d | 2022-12-05 | 2022-12-07 | 35 | 12d | 0d | Programador 1 | 24h | 240 |
| 35 | 5.7 | BBDD-Diseño | 5d | 2022-11-28 | 2022-12-02 |  | 0d |  | Arquitecto 1 | 40h | 600 |
| 36 | 6 | **4-Identificación y acceso** | 10d | 2023-01-16 | 2023-01-27 |  | 1d |  |  | 120h | 1,235 |
| 37 | 6.1 | Pantalla/formulario-Pruebas | 3d | 2023-01-23 | 2023-01-25 | 9 | 19d | 0d | Tester 1 | 24h | 195 |
| 38 | 6.2 | Pantalla/formulario-Codificación | 4d | 2023-01-24 | 2023-01-27 | 39, 10 | 43d | 0d | Programador 2 | 32h | 320 |
| 39 | 6.3 | Pantalla/formulario-Diseño | 1d | 2023-01-17 | 2023-01-17 | 41 | 2.5d | 0d | Arquitecto 1 | 8h | 120 |
| 40 | 6.4 | Controlador-Codificación | 3d | 2023-01-20 | 2023-01-24 | 41, 42 | 0d |  | Programador 1 | 24h | 240 |
| 41 | 6.5 | Controlador-Diseño | 1d | 2023-01-16 | 2023-01-16 | 11 | 2.5d | 0d | Arquitecto 1 | 8h | 120 |
| 42 | 6.6 | DAO-Codificación | 3d | 2023-01-17 | 2023-01-19 | 12 | 0d |  | Programador 1 | 24h | 240 |
| 43 | 7 | **5-Cambiar credenciales** | 12d | 2023-01-18 | 2023-02-02 |  | 2.5d |  |  | 136h | 1,435 |
| 44 | 7.1 | Pantalla/formulario-Pruebas | 3d | 2023-01-26 | 2023-01-30 | 37 | 19d | 0d | Tester 1 | 24h | 195 |
| 45 | 7.2 | Pantalla/formulario-Codificación | 4d | 2023-01-30 | 2023-02-02 | 46, 38 | 43d | 12.5d | Programador 2 | 32h | 320 |
| 46 | 7.3 | Pantalla/formulario-Diseño | 1d | 2023-01-20 | 2023-01-20 | 48 | 2.5d | 0d | Arquitecto 1 | 8h | 120 |
| 47 | 7.4 | Controlador-Codificación | 5d | 2023-01-27 | 2023-02-02 | 48, 49 | 0d |  | Programador 1 | 40h | 400 |
| 48 | 7.5 | Controlador-Diseño | 2d | 2023-01-18 | 2023-01-19 | 39 | 2.5d | 0d | Arquitecto 1 | 16h | 240 |
| 49 | 7.6 | DAO-Codificación | 2d | 2023-01-25 | 2023-01-26 | 40 | 0d |  | Programador 1 | 16h | 160 |
| 50 | 8 | **8-Registrar nuevo producto** | 16.5d | 2023-02-08 | 2023-03-02 |  | 2.5d |  |  | 236h | 2,665 |
| 51 | 8.1 | BBDD-Diseño | 2.5d | 2023-02-08 | 2023-02-10 | 25 | 2.5d | 0d | Arquitecto 1 | 20h | 300 |
| 52 | 8.2 | DAO-Codificación | 3d | 2023-02-17 | 2023-02-21 | 24 | 0d |  | Programador 1 | 24h | 240 |
| 53 | 8.3 | Controlador-Diseño | 2d | 2023-02-10 | 2023-02-14 | 51 | 2.5d | 0d | Arquitecto 1 | 16h | 240 |
| 54 | 8.4 | Controlador-Codificación | 5d | 2023-02-22 | 2023-02-28 | 53, 52 | 0d |  | Programador 1 | 40h | 400 |
| 55 | 8.5 | Pantalla/formulario-Diseño | 5d | 2023-02-14 | 2023-02-21 | 53 | 2.5d | 0d | Arquitecto 1 | 40h | 600 |
| 56 | 8.6 | Pantalla/formulario-Codificación | 7d | 2023-02-21 | 2023-03-02 | 55, 45 | 30.5d | 7d | Programador 2 | 56h | 560 |
| 57 | 8.7 | Pantalla/formulario-Pruebas | 5d | 2023-02-10 | 2023-02-16 | 27 | 19d | 0d | Tester 1 | 40h | 325 |

| ID | WBS | Task | Duration | Start | Finish | Predecessors | Total slack | Free slack | Resources | Work | Cost |
| --- | --- | --- | --- | --- | --- | --- | --- | --- | --- | --- | --- |
| 58 | 9 | **9-Editar producto existente** | 13d | 2023-02-17 | 2023-03-07 |  | 5d |  |  | 72h | 715 |
| 59 | 9.1 | DAO-Codificación | 2d | 2023-03-01 | 2023-03-02 | 54 | 0d |  | Programador 1 | 16h | 160 |
| 60 | 9.2 | Controlador-Diseño | 1d | 2023-02-21 | 2023-02-22 | 55 | 2.5d | 0d | Arquitecto 1 | 8h | 120 |
| 61 | 9.3 | Controlador-Codificación | 3d | 2023-03-03 | 2023-03-07 | 60, 59 | 0d |  | Programador 1 | 24h | 240 |
| 62 | 9.4 | Pantalla/formulario-Pruebas | 3d | 2023-02-17 | 2023-02-21 | 57 | 19d | 0d | Tester 1 | 24h | 195 |
| 63 | 10 | **10-Eliminar producto** | 12d | 2023-02-22 | 2023-03-09 |  | 3d |  |  | 32h | 345 |
| 64 | 10.1 | DAO-Codificación | 1d | 2023-03-08 | 2023-03-08 | 61 | 0d |  | Programador 1 | 8h | 80 |
| 65 | 10.2 | Controlador-Diseño | 1d | 2023-02-22 | 2023-02-23 | 60 | 2.5d | 0d | Arquitecto 1 | 8h | 120 |
| 66 | 10.3 | Controlador-Codificación | 1d | 2023-03-09 | 2023-03-09 | 65, 64 | 0d |  | Programador 1 | 8h | 80 |
| 67 | 10.4 | Pantalla/formulario-Pruebas | 1d | 2023-02-22 | 2023-02-22 | 62 | 19d | 0d | Tester 1 | 8h | 65 |
| 68 | 11 | **11-Editar stock manual** | 16d | 2023-02-23 | 2023-03-16 |  | 3d |  |  | 72h | 715 |
| 69 | 11.1 | DAO-Codificación | 2d | 2023-03-10 | 2023-03-13 | 66 | 0d |  | Programador 1 | 16h | 160 |
| 70 | 11.2 | Controlador-Diseño | 1d | 2023-02-23 | 2023-02-24 | 65 | 2.5d | 0d | Arquitecto 1 | 8h | 120 |
| 71 | 11.3 | Controlador-Codificación | 3d | 2023-03-14 | 2023-03-16 | 70, 69 | 0d |  | Programador 1 | 24h | 240 |
| 72 | 11.4 | Pantalla/formulario-Pruebas | 3d | 2023-02-23 | 2023-02-27 | 67 | 19d | 0d | Tester 1 | 24h | 195 |
| 73 | 12 | **13-Añadir producto a la cesta** | 20.5d | 2023-03-07 | 2023-04-04 |  | 7d |  |  | 168h | 1,845 |
| 74 | 12.1 | Controlador-Diseño | 1d | 2023-03-13 | 2023-03-14 | 107 | 2.5d | 0d | Arquitecto 1 | 8h | 120 |
| 75 | 12.2 | Controlador-Codificación | 3d | 2023-03-24 | 2023-03-28 | 74, 106 | 0d |  | Programador 1 | 24h | 240 |
| 76 | 12.3 | Pantalla/formulario-Diseño | 5d | 2023-03-14 | 2023-03-21 | 74 | 2.5d | 0d | Arquitecto 1 | 40h | 600 |
| 77 | 12.4 | Pantalla/formulario-Codificación | 7d | 2023-03-24 | 2023-04-04 | 76, 108 | 23.5d | 0d | Programador 2 | 56h | 560 |
| 78 | 12.5 | Pantalla/formulario-Pruebas | 5d | 2023-03-07 | 2023-03-13 | 109 | 19d | 0d | Tester 1 | 40h | 325 |
| 79 | 13 | **16-Modificar cantidad de producto** | 15d | 2023-03-27 | 2023-04-14 |  | 7d |  |  | 56h | 555 |
| 80 | 13.1 | Controlador-Diseño | 1d | 2023-03-31 | 2023-04-03 | 118 | 6.5d | 0d | Arquitecto 1 | 8h | 120 |
| 81 | 13.2 | Controlador-Codificación | 3d | 2023-04-12 | 2023-04-14 | 80, 119 | 0d |  | Programador 1 | 24h | 240 |
| 82 | 13.3 | Pantalla/formulario-Pruebas | 3d | 2023-03-27 | 2023-03-29 | 120 | 19d | 0d | Tester 1 | 24h | 195 |

| ID | WBS | Task | Duration | Start | Finish | Predecessors | Total slack | Free slack | Resources | Work | Cost |
| --- | --- | --- | --- | --- | --- | --- | --- | --- | --- | --- | --- |
| 83 | 14 | **17-Editar dirección de envio** | 15d | 2023-03-30 | 2023-04-19 |  | 7d |  |  | 56h | 555 |
| 84 | 14.1 | Controlador-Diseño | 1d | 2023-04-03 | 2023-04-04 | 80 | 8.5d | 0d | Arquitecto 1 | 8h | 120 |
| 85 | 14.2 | Controlador-Codificación | 3d | 2023-04-17 | 2023-04-19 | 84, 81 | 0d |  | Programador 1 | 24h | 240 |
| 86 | 14.3 | Pantalla/formulario-Pruebas | 3d | 2023-03-30 | 2023-04-03 | 82 | 19d | 0d | Tester 1 | 24h | 195 |
| 87 | 15 | **18-Elegir método de pago** | 15d | 2023-04-04 | 2023-04-24 |  | 7d |  |  | 56h | 555 |
| 88 | 15.1 | Controlador-Diseño | 1d | 2023-04-04 | 2023-04-05 | 84 | 10.5d | 0d | Arquitecto 1 | 8h | 120 |
| 89 | 15.2 | Controlador-Codificación | 3d | 2023-04-20 | 2023-04-24 | 88, 85 | 0d |  | Programador 1 | 24h | 240 |
| 90 | 15.3 | Pantalla/formulario-Pruebas | 3d | 2023-04-04 | 2023-04-06 | 86 | 19d | 0d | Tester 1 | 24h | 195 |
| 91 | 16 | **19-Interacción pago TPV** | 18.5d | 2023-04-05 | 2023-05-01 |  | 5d |  |  | 80h | 835 |
| 92 | 16.1 | Controlador-Diseño | 2d | 2023-04-05 | 2023-04-07 | 88 | 11.5d | 0d | Arquitecto 1 | 16h | 240 |
| 93 | 16.2 | Controlador-Codificación | 5d | 2023-04-25 | 2023-05-01 | 92, 89 | 0d |  | Programador 1 | 40h | 400 |
| 94 | 16.3 | Controlador-Pruebas | 3d | 2023-04-07 | 2023-04-11 | 90 | 19d | 0d | Tester 1 | 24h | 195 |
| 95 | 17 | **20-Ajustes automáticos para la venta** | 24.5d | 2023-04-07 | 2023-05-11 |  | 1d |  |  | 128h | 1,380 |
| 96 | 17.1 | Controlador-Diseño | 4d | 2023-04-07 | 2023-04-13 | 92 | 12.5d | 0d | Arquitecto 1 | 32h | 480 |
| 97 | 17.2 | Controlador-Codificación | 8d | 2023-05-02 | 2023-05-11 | 96, 93 | 0d |  | Programador 1 | 64h | 640 |
| 98 | 17.3 | Controlador-Pruebas | 4d | 2023-04-12 | 2023-04-17 | 94 | 19d | 0d | Tester 1 | 32h | 260 |
| 99 | 18 | **21-Notificación a la empresa transportista** | 23.5d | 2023-04-13 | 2023-05-16 |  | 0d |  |  | 48h | 490 |
| 100 | 18.1 | Controlador-Diseño | 1d | 2023-04-13 | 2023-04-14 | 96 | 19.5d |  | Arquitecto 1 | 8h | 120 |
| 101 | 18.2 | Controlador-Codificación | 3d | 2023-05-12 | 2023-05-16 | 100, 97 | 0d |  | Programador 1 | 24h | 240 |
| 102 | 18.3 | Controlador-Pruebas | 2d | 2023-04-18 | 2023-04-19 | 98 | 19d |  | Tester 1 | 16h | 130 |
| 103 | 19 | **12-Vista general del catálogo** | 20d | 2023-02-24 | 2023-03-24 |  | 2.5d |  |  | 240h | 2,765 |
| 104 | 19.1 | DAO-Codificación | 2d | 2023-03-17 | 2023-03-20 | 71 | 0d |  | Programador 1 | 16h | 160 |
| 105 | 19.2 | Controlador-Diseño | 1d | 2023-02-24 | 2023-02-27 | 70 | 2.5d | 0d | Arquitecto 1 | 8h | 120 |
| 106 | 19.3 | Controlador-Codificación | 3d | 2023-03-21 | 2023-03-23 | 105, 104 | 0d |  | Programador 1 | 24h | 240 |
| 107 | 19.4 | Pantalla/formulario-Diseño | 10d | 2023-02-27 | 2023-03-13 | 105 | 2.5d | 0d | Arquitecto 1 | 80h | 1,200 |
| 108 | 19.5 | Pantalla/formulario-Codificación | 9d | 2023-03-13 | 2023-03-24 | 107, 56 | 23.5d | 0d | Programador 2 | 72h | 720 |
| 109 | 19.6 | Pantalla/formulario-Pruebas | 5d | 2023-02-28 | 2023-03-06 | 72 | 19d | 0d | Tester 1 | 40h | 325 |

| ID | WBS | Task | Duration | Start | Finish | Predecessors | Total slack | Free slack | Resources | Work | Cost |
| --- | --- | --- | --- | --- | --- | --- | --- | --- | --- | --- | --- |
| 110 | 20 | **14-Vista concreta de producto** | 22.5d | 2023-03-14 | 2023-04-13 |  | 8d |  |  | 184h | 2,005 |
| 111 | 20.1 | DAO-Codificación | 2d | 2023-03-29 | 2023-03-30 | 75 | 0d |  | Programador 1 | 16h | 160 |
| 112 | 20.2 | Controlador-Diseño | 1d | 2023-03-21 | 2023-03-22 | 76 | 2.5d | 0d | Arquitecto 1 | 8h | 120 |
| 113 | 20.3 | Controlador-Codificación | 3d | 2023-03-31 | 2023-04-04 | 112, 111 | 0d |  | Programador 1 | 24h | 240 |
| 114 | 20.4 | Pantalla/formulario-Diseño | 5d | 2023-03-22 | 2023-03-29 | 112 | 2.5d | 0d | Arquitecto 1 | 40h | 600 |
| 115 | 20.5 | Pantalla/formulario-Codificación | 7d | 2023-04-04 | 2023-04-13 | 114, 77 | 23.5d |  | Programador 2 | 56h | 560 |
| 116 | 20.6 | Pantalla/formulario-Pruebas | 5d | 2023-03-14 | 2023-03-20 | 78 | 19d | 0d | Tester 1 | 40h | 325 |
| 117 | 21 | **15-Aplicar búsqueda por texto** | 16d | 2023-03-21 | 2023-04-11 |  | 7d |  |  | 88h | 900 |
| 118 | 21.1 | Controlador-Diseño | 2d | 2023-03-29 | 2023-03-31 | 114 | 2.5d | 0d | Arquitecto 1 | 16h | 240 |
| 119 | 21.2 | Controlador-Codificación | 5d | 2023-04-05 | 2023-04-11 | 118, 113 | 0d |  | Programador 1 | 40h | 400 |
| 120 | 21.3 | Pantalla/formulario-Pruebas | 4d | 2023-03-21 | 2023-03-24 | 116 | 19d | 0d | Tester 1 | 32h | 260 |
